| TaskID | TaskName | EndDate | StartDate | Duration | Progress | Predecessor |
| --- | --- | --- | --- | --- | --- | --- |
| 19 | Preparacion del Fuente | 2022-03-07T22:00:00.000Z | 2021-12-27T13:00:00.000Z | 51 | 0 |  |
| 1 | Preparacion del Texto | 2022-01-11T22:00:00.000Z | 2021-12-27T13:00:00.000Z | 12 | 33 |  |
| 2 | · Preparación de palabras claves | 2021-12-30T22:00:00.000Z | 2021-12-27T13:00:00.000Z | 4 | 100 |  |
| 3 | · Eliminación selectiva de caracteres | 2022-01-05T22:00:00.000Z | 2021-12-31T13:00:00.000Z | 4 | 0 | 2FS |
| 4 | · Validación de funciones de procesamiento de textos | 2022-01-11T22:00:00.000Z | 2022-01-06T13:00:00.000Z | 4 | 0 | 3FS |
| 5 | Pre-procesamiento del Texto | 2022-02-04T22:00:00.000Z | 2022-01-12T13:00:00.000Z | 18 | 0 |  |
| 8 | · Tokenización de palabras y limpieza de textos | 2022-01-17T22:00:00.000Z | 2022-01-12T13:00:00.000Z | 4 | 0 | 4FS |
| 10 | · Modelos de N-gramas | 2022-01-24T22:00:00.000Z | 2022-01-18T13:00:00.000Z | 5 | 0 | 8FS |
| 9 | · Eliminación de Stopwords, bigramas y Lematización | 2022-01-28T22:00:00.000Z | 2022-01-25T13:00:00.000Z | 4 | 0 | 10FS |
| 15 | · Diccionario y Corpus | 2022-02-04T22:00:00.000Z | 2022-01-31T13:00:00.000Z | 5 | 0 | 9FS |
| 20 | Redifinicion de target | 2022-02-23T22:00:00.000Z | 2022-02-07T13:00:00.000Z | 13 | 0 |  |
| 21 | · Construccion de catalogos | 2022-02-16T22:00:00.000Z | 2022-02-07T13:00:00.000Z | 8 | 0 | 15FS |
| 22 | · Pipeline de limpieza de datos | 2022-02-23T22:00:00.000Z | 2022-02-17T13:00:00.000Z | 5 | 0 | 21FS |
| 6 | Modelo LDA | 2022-03-10T22:00:00.000Z | 2022-02-24T13:00:00.000Z | 11 | 0 |  |
| 12 | · Diseño del Modelo LDA | 2022-03-02T22:00:00.000Z | 2022-02-24T13:00:00.000Z | 5 | 0 | 22FS |
| 14 | · Temas del modelo LDA | 2022-03-07T22:00:00.000Z | 2022-03-03T13:00:00.000Z | 3 | 0 | 12FS |
| 13 | · Visualización de tópicos LDA | 2022-03-10T22:00:00.000Z | 2022-03-08T13:00:00.000Z | 3 | 0 | 14FS |
| 7 | Clasificación del reclamo | 2022-03-30T22:00:00.000Z | 2022-03-11T13:00:00.000Z | 14 | 0 |  |
| 17 | · Modelo Lineal binario | 2022-03-18T22:00:00.000Z | 2022-03-11T13:00:00.000Z | 6 | 0 | 13FS |
| 18 | · Clasificación de reclamos | 2022-03-22T22:00:00.000Z | 2022-03-21T13:00:00.000Z | 2 | 0 | 17FS |
| 16 | · Extraer valores de las descripciones | 2022-03-30T22:00:00.000Z | 2022-03-23T13:00:00.000Z | 6 | 0 | 18FS |
